# ActionPlan

Schedule from MS Project, 2011-05-16 to 2013-07-05.
Universita' di Salerno

## Calendars

- Standard: Mon-Fri 08:00-12:00, 13:00-17:00; Sat-Sun off.

## Schedule

| ID | WBS | Task | Duration | Start | Finish | Predecessors | Total slack | Free slack |
| --- | --- | --- | --- | --- | --- | --- | --- | --- |
| 1 | 1 | **1 Interventi Infrastrutturali** | 520d | 2011-05-16 | 2013-05-10 |  | 40d |  |
| 2 | 1.1 | **1.1 Sistema Informatico di Supporto al Sistema Informativo Regionale** | 520d | 2011-05-16 | 2013-05-10 |  | 40d | 0d |
| 3 | 1.1.1 | 1.1.a Realizzazione data center centrale | 6mo | 2011-05-16 | 2011-10-28 |  | 160d | 0d |
| 4 | 1.1.2 | 1.1.b Architettura SOA-SPCCoop (middleware) | 6mo | 2011-10-31 | 2012-04-13 | 3 | 160d | 0d |
| 5 | 1.1.3 | 1.1.c Interfacce Spicca – verso il mondo esterno | 3mo | 2012-04-16 | 2012-07-06 | 4 | 160d | 0d |
| 6 | 1.1.4 | 1.1.d Applicazione per la Circolarità Anagrafica (data-hub) | 3mo | 2012-07-09 | 2012-09-28 | 5 | 160d |  |
| 7 | 1.1.5 | 1.1.e Soluzione CMS regionale (supporto servizi CRS) | 12mo | 2012-06-11 | 2013-05-10 | 10 | 40d |  |
| 8 | 1.2 | 1.2 Reingegnerizzazione del Portale Regionale | 6mo | 2011-08-08 | 2012-01-20 | 2SS+3mo | 340d |  |
| 9 | 1.3 | **1.3 Carta Regionale dei Servizi** | 160d | 2012-04-16 | 2012-11-23 | 30 | 40d |  |
| 10 | 1.3.1 | 1.3.a Accordo MEF / individuazione di un soggetto alternativo per l’emissione delle CNS | 2mo | 2012-04-16 | 2012-06-08 |  | 40d | 0d |
| 11 | 1.3.2 | 1.3.b Realizzazione del Call Center di supporto all’utenza | 6mo | 2012-06-11 | 2012-11-23 | 10 | 120d |  |
| 12 | 2 | **2 Interventi per il Territorio** | 560d | 2011-05-16 | 2013-07-05 |  | 0d |  |
| 13 | 2.1 | **2.1 Copertura Circolarità Anagrafica (Completamento/Aggiornamento/Estensione)** | 120d | 2011-05-16 | 2011-10-28 |  | 440d | 0d |
| 14 | 2.1.1 | 2.1.a Bando per Comuni, CST o aggregazioni per completamento circolarità anagrafica | 6mo | 2011-05-16 | 2011-10-28 |  | 400d |  |
| 15 | 2.1.2 | 2.1.b Bando rivolto ai CST per l’erogazione di servizi di supporto alla circolarità anagrafica | 6mo | 2011-05-16 | 2011-10-28 |  | 400d |  |
| 16 | 2.2 | **2.2 Ambito Sanitario** | 560d | 2011-05-16 | 2013-07-05 |  | 0d |  |
| 17 | 2.2.1 | 2.2.a Reingegnerizzazione dei processi | 4mo | 2011-05-16 | 2011-09-02 |  | 0d |  |
| 18 | 2.2.2 | 2.2.b Fascicolo Sanitario Elettronico | 12mo | 2011-09-05 | 2012-08-03 | 17 | 0d |  |
| 19 | 2.2.3 | 2.2.c Rete Medici di Base | 12mo | 2012-02-20 | 2013-01-18 | 18SS+6mo | 0d |  |
| 20 | 2.2.4 | 2.2.d Ricette elettroniche | 12mo | 2012-08-06 | 2013-07-05 | 19SS+6mo | 0d |  |
| 21 | 2.3 | **2.3 Digitalizzazione della PAL / Progetti di Innovazione per gli EE.LL.** | 400d | 2011-05-16 | 2012-11-23 |  | 160d |  |
| 22 | 2.3.1 | 2.3.a Bando per la selezione del soggetto attuatore/erogatore dei servizi | 6mo | 2011-05-16 | 2011-10-28 |  | 400d |  |
| 23 | 2.3.2 | 2.3.b Bando per l’attivazione degli sportelli per l’assistenza al cittadino | 6mo | 2012-06-11 | 2012-11-23 | 10 | 120d |  |
| 24 | 2.3.3 | 2.3.c Sperimentazione presso gli Atenei o EE.LL. del sistema di autenticazione | 12mo | 2011-11-28 | 2012-10-26 | 31 | 140d |  |
| 25 | 2.3.4 | 2.3.d Progetto sistema informativo per gli studenti | 12mo | 2011-11-28 | 2012-10-26 | 31 | 140d |  |

| ID | WBS | Task | Duration | Start | Finish | Predecessors | Total slack | Free slack |
| --- | --- | --- | --- | --- | --- | --- | --- | --- |
| 26 | 2.4 | **2.4 Interventi alle Imprese** | 120d | 2011-05-16 | 2011-10-28 |  | 400d |  |
| 27 | 2.4.1 | 2.4.a Bando per il finanziamento di progetti di innovazione per librerie ed editori | 6mo | 2011-05-16 | 2011-10-28 |  | 440d |  |
| 28 | 3 | **3 Governance** | 480d | 2011-05-16 | 2013-03-15 |  | 80d |  |
| 29 | 3.1 | 3.1 Individuazione del Soggetto Gestore/Erogatore Dei Servizi | 3mo | 2011-05-16 | 2011-08-05 |  | 460d |  |
| 30 | 3.2 | **3.2 Sperimentazioni Intermedie** | 180d | 2011-08-08 | 2012-04-13 | 13SS+3mo | 40d | 0d |
| 31 | 3.2.1 | 3.2.a Accordo con Sanità per l’utilizzo del CMS | 4mo | 2011-08-08 | 2011-11-25 |  | 40d | 0d |
| 32 | 3.2.2 | 3.2.b Avvio sperimentazione CNS prossimo rilascio SOGEI | 2mo | 2011-11-28 | 2012-01-20 | 31 | 40d | 0d |
| 33 | 3.2.3 | 3.2.c Formazione/incentivazione personale sanità per l’attivazione delle carte | 3mo | 2012-01-23 | 2012-04-13 | 32 | 40d |  |
| 34 | 3.3 | **3.3 Sistema Di Monitoraggio dei Risultati** | 480d | 2011-05-16 | 2013-03-15 |  | 40d |  |
| 35 | 3.3.1 | 3.3.a Definizione del modello da adottare) | 6mo | 2011-05-16 | 2011-10-28 |  | 40d | 0d |
| 36 | 3.3.2 | 3.3.b Sperimentazione su un campione (CST / progetti di eGov) | 6mo | 2011-10-31 | 2012-04-13 | 35 | 40d | 0d |
| 37 | 3.3.3 | 3.3.c Estensione del sistema a tutti i progetti | 12mo | 2012-04-16 | 2013-03-15 | 36 | 40d |  |
